# ProjectPlan_Security Awareness_July2013

Schedule from MS Project, 2013-06-17 to 2014-07-25, status date 2013-08-01, 7.5 hours a day.
CSPS-EFPC

## Calendars

- GoC Standard working Calendar: Mon-Fri 08:00-12:00, 13:00-17:00; Sat-Sun off. Exceptions (off unless hours are given): 2013-07-01, 2013-08-05, 2013-09-02, 2013-10-14, 2013-11-11, 2013-12-25 to 2013-12-26, 2014-01-01.

## Resources

| Resource |
| --- |
| Director |
| Learning Advisor |
| Lead Subject Matter Expert |
| Writer/Editor |
| Graphic Designer |
| Project Manager |
| SME Working Group |
| Stakeholder(s) |
| Multimedia Developer |
| Quality Assurance |
| Translation |
| iLMS |
| Associate Director |
| iLMS IT |
| Finance |
| Outreach |
| Communications and Marketing |
| Intregration Tester |

## Schedule

| ID | WBS | Task | Duration | Start | Finish | Total slack | Free slack | Constraint | Deadline |
| --- | --- | --- | --- | --- | --- | --- | --- | --- | --- |
| 1 | 1 | Project Plan - Security Awareness online | 211.07d | 2013-06-17 08:00 | 2014-03-31 16:00 | -193.07d | 0d | finish no later than 2014-03-31 16:00 | 2013-07-10 16:00 |
| 2 | 2 | **Analyze** | 22.9d | 2013-06-17 08:00 | 2013-07-17 11:45 | -634.1d | 0d |  | 2011-03-31 17:00 |
| 3 | 2.1 | **Project kick-off** | 22.9d | 2013-06-17 08:00 | 2013-07-17 11:45 | -634.1d | 0d |  |  |
| 4 | 2.1.1 | **Project Charter** | 22.9d | 2013-06-17 08:00 | 2013-07-17 11:45 | -634.1d | 0d |  |  |
| 5 | 2.1.1.1 | Identify audience | 0.5d | 2013-06-17 08:00 | 2013-06-17 11:45 | -611.7d | 0d | start no earlier than 2013-06-17 08:00 |  |
| 6 | 2.1.1.2 | Identify learning needs | 0.5d | 2013-06-17 08:00 | 2013-06-17 11:45 | -611.7d | 0d |  |  |
| 7 | 2.1.1.3 | Determine overall project objective | 1d | 2013-06-18 08:00 | 2013-06-18 16:30 | -613.27d | 0d | start no earlier than 2013-06-18 08:00 |  |
| 8 | 2.1.1.4 | Identify expectations for the types of multimedia required including interactions, graphics, audios and videos | 1d | 2013-06-19 08:00 | 2013-06-19 16:30 | -614.33d | 0d | start no earlier than 2013-06-19 08:00 |  |
| 9 | 2.1.1.5 | Determine length of course | 0.5d | 2013-06-20 08:00 | 2013-06-20 11:45 | -614.9d | 0d | start no earlier than 2013-06-20 08:00 |  |
| 10 | 2.1.1.6 | Determine tracking of costs | 1d | 2013-07-16 08:00 | 2013-07-16 16:30 | -633.53d | 0d | start no earlier than 2013-07-16 08:00 |  |
| 11 | 2.1.1.7 | Identify level of approval process | 0.5d | 2013-07-17 08:00 | 2013-07-17 11:45 | -634.1d | 0d | start no earlier than 2013-07-17 08:00 |  |
| 12 | 2.1.2 | **Subject Matter Expert (SME) Working Group** | 21.27d | 2013-06-17 08:00 | 2013-07-15 16:30 | -632.47d | 0d |  |  |
| 13 | 2.1.2.1 | Develop SME recruitment plan & methodology | 3d | 2013-07-08 08:00 | 2013-07-10 15:30 | -629.13d | 0d | start no earlier than 2013-07-08 08:00 |  |
| 14 | 2.1.2.2 | Develop SME work group work plan | 2d | 2013-07-11 08:00 | 2013-07-12 16:00 | -631.33d | 0d | start no earlier than 2013-07-11 08:00 |  |
| 15 | 2.1.2.3 | Identify and confirm SME availability to work on project | 1d | 2013-07-03 08:00 | 2013-07-03 16:30 | -623.93d | 0d | start no earlier than 2013-07-03 08:00 |  |
| 16 | 2.1.2.4 | Plan and schedule WG kick-off meeting | 2d | 2013-06-17 08:00 | 2013-06-18 16:00 | -613.2d | 0d | as late as possible |  |
| 17 | 2.1.2.5 | Working group kick-off meeting | 0.5d | 2013-06-17 08:00 | 2013-06-17 11:45 | -611.7d | 0d | as late as possible |  |
| 18 | 2.1.2.6 | Write clear roles and responsibilities for working group or Lead SME | 1d | 2013-07-15 08:00 | 2013-07-15 16:30 | -632.47d | 0d | start no earlier than 2013-07-15 08:00 |  |
| 19 | 2.1.2.7 | Agree on appropriate method of communication | 0.5d | 2013-06-17 08:00 | 2013-06-17 11:45 | -611.7d | 0d | as late as possible |  |
| 20 | 2.1.2.8 | Environmental scan of existing products | 3d | 2013-06-17 08:00 | 2013-06-19 15:30 | -614.2d | 0d | as late as possible |  |
| 21 | 2.1.2.9 | Gather existing content/Source Documents | 2d | 2013-06-17 08:00 | 2013-06-18 16:00 | -613.2d | 0d | as late as possible |  |
| 22 | 2.1.2.10 | Provide sample of project plan to SME identifying deliverables and dates | 1d | 2013-06-17 08:00 | 2013-06-17 16:30 | -612.2d | 0d | as late as possible |  |
| 23 | 2.1.2.11 | Write project scope | 3d | 2013-06-17 08:00 | 2013-06-19 15:30 | -614.2d | 0d | as late as possible |  |
| 24 | 2.1.2.12 | Review of project scope | 0.5d | 2013-06-17 08:00 | 2013-06-17 11:45 | -611.7d | 0d | as late as possible |  |
| 25 | 2.1.2.13 | Develop Course Map/Outline | 3d | 2013-06-17 08:00 | 2013-06-19 15:30 | -614.2d | 0d | as late as possible |  |
| 26 | 2.1.2.14 | Sign-off of project scope, project plan & course map | 0.5d | 2013-06-17 08:00 | 2013-06-17 11:45 | -611.7d | 0d | as late as possible |  |

| ID | WBS | Task | Duration | Start | Finish | Total slack | Free slack | Constraint |
| --- | --- | --- | --- | --- | --- | --- | --- | --- |
| 27 | 2.1.3 | **Course Creation Process** | 3d | 2013-06-17 08:00 | 2013-06-19 15:30 | -614.2d | 0d |  |
| 28 | 2.1.3.1 | Draft course description and abstract (LOIF) | 0.5d | 2013-06-17 08:00 | 2013-06-17 11:45 | -611.7d | 0d | as late as possible |
| 29 | 2.1.3.2 | Request Legacy Course | 0.5d | 2013-06-17 08:00 | 2013-06-17 11:45 | -611.7d | 0d | as late as possible |
| 30 | 2.1.3.3 | **Start costing process** | 0.5d | 2013-06-17 08:00 | 2013-06-17 11:45 | -611.7d | 0d |  |
| 31 | 2.1.3.3.1 | Request Internal order | 0.5d | 2013-06-17 08:00 | 2013-06-17 11:45 | -611.7d | 0d | as late as possible |
| 32 | 2.1.3.4 | Draft marketing/communication strategy | 2d | 2013-06-17 08:00 | 2013-06-18 16:00 | -613.2d | 0d | as late as possible |
| 33 | 2.1.3.5 | Develop Evaluation strategy/methodology | 3d | 2013-06-17 08:00 | 2013-06-19 15:30 | -614.2d | 0d | as late as possible |
| 34 | 3 | **Design Phase** | 5d | 2014-07-21 08:00 | 2014-07-25 14:30 | 0d |  |  |
| 35 | 3.1 | **BluePrint** | 5d | 2014-07-21 08:00 | 2014-07-25 14:30 | 0d |  |  |
| 36 | 3.1.1 | **Analysis** | 5d | 2014-07-21 08:00 | 2014-07-25 14:30 | 0d |  |  |
| 37 | 3.1.1.1 | Evaluate, prioritze and/or select existing content | 5d | 2014-07-21 08:00 | 2014-07-25 14:30 | 0d |  | start no earlier than 2014-07-21 08:00 |
| 38 | 3.1.1.2 | Identify Gap in content | 1d | 2014-07-24 15:00 | 2014-07-25 14:30 | 0d |  | as late as possible |
| 39 | 3.1.1.3 | Write measurable learning objectives | 1d | 2014-07-24 15:00 | 2014-07-25 14:30 | 0d |  | as late as possible |
| 40 | 3.1.1.4 | Work with SME's on validating existing content | 5d | 2014-07-21 08:00 | 2014-07-25 14:30 | 0d |  | as late as possible |
| 41 | 3.1.1.5 | Create new content if needed | 5d | 2014-07-21 08:00 | 2014-07-25 14:30 | 0d |  | as late as possible |
| 42 | 3.1.1.6 | Identify Topics / Lessons and Activites | 2d | 2014-07-23 15:30 | 2014-07-25 14:30 | 0d |  | as late as possible |
| 43 | 3.1.1.7 | Determine curriculum content based on learning objectives | 2d | 2014-07-23 15:30 | 2014-07-25 14:30 | 0d |  | as late as possible |
| 44 | 3.1.1.8 | Determine program structure / sequencing | 1d | 2014-07-24 15:00 | 2014-07-25 14:30 | 0d |  | as late as possible |
| 45 | 3.1.1.9 | Determine course Look and Feel for online - interface | 1d | 2014-07-24 15:00 | 2014-07-25 14:30 | 0d |  | as late as possible |
| 46 | 3.1.1.10 | Submit to SME & working group for feedback | 0.5d | 2014-07-25 09:45 | 2014-07-25 14:30 | 0d |  | as late as possible |
| 47 | 3.1.1.11 | Select authoring tool for development | 0.5d | 2014-07-25 09:45 | 2014-07-25 14:30 | 0d |  | as late as possible |
| 48 | 3.2 | **Storyboards** | 2d | 2014-07-23 15:30 | 2014-07-25 14:30 | 0d |  |  |
| 49 | 3.2.1 | **Module 1 (Intro)** | 2d | 2014-07-23 15:30 | 2014-07-25 14:30 | 0d |  |  |
| 50 | 3.2.1.1 | Create Storyboards ensuring proper flow and chunking of content | 2d | 2014-07-23 15:30 | 2014-07-25 14:30 | 0d |  | as late as possible |
| 51 | 3.2.1.2 | Identify graphic placeholders | 0.5d | 2014-07-25 09:45 | 2014-07-25 14:30 | 0d |  | as late as possible |
| 52 | 3.2.1.3 | SME Review Storyboard | 1d | 2014-07-24 15:00 | 2014-07-25 14:30 | 0d |  | as late as possible |
| 53 | 3.2.1.4 | Peer Review Storyboard | 1d | 2014-07-24 15:00 | 2014-07-25 14:30 | 0d |  | as late as possible |
| 54 | 3.2.1.5 | Storyboard review meeting | 0.5d | 2014-07-25 09:45 | 2014-07-25 14:30 | 0d |  | as late as possible |
| 55 | 3.2.1.6 | Implement storyboard edits | 1d | 2014-07-24 15:00 | 2014-07-25 14:30 | 0d |  | as late as possible |
| 56 | 3.2.1.7 | Mgmt review of Storyboard | 0.5d | 2014-07-25 09:45 | 2014-07-25 14:30 | 0d |  | as late as possible |
| 57 | 3.2.1.8 | Mgmt approval of Storyboard | 0.5d | 2014-07-25 09:45 | 2014-07-25 14:30 | 0d |  | as late as possible |
| 58 | 3.2.1.9 | Send to editing services | 0.5d | 2014-07-25 09:45 | 2014-07-25 14:30 | 0d |  | as late as possible |
| 59 | 3.2.1.10 | Send to translation | 0.5d | 2014-07-25 09:45 | 2014-07-25 14:30 | 0d |  | as late as possible |
| 60 | 3.2.1.11 | Send to Design & Development for prototype creation | 0.5d | 2014-07-25 09:45 | 2014-07-25 14:30 | 0d |  | as late as possible |

| ID | WBS | Task | Duration | Start | Finish | Total slack | Constraint |
| --- | --- | --- | --- | --- | --- | --- | --- |
| 61 | 3.2.2 | **Module 2 (Policy and Legislative Background)** | 2d | 2014-07-23 15:30 | 2014-07-25 14:30 | 0d |  |
| 62 | 3.2.2.1 | Create Storyboards ensuring proper flow and chunking of content | 2d | 2014-07-23 15:30 | 2014-07-25 14:30 | 0d | as late as possible |
| 63 | 3.2.2.2 | Identify graphic placeholders | 0.5d | 2014-07-25 09:45 | 2014-07-25 14:30 | 0d | as late as possible |
| 64 | 3.2.2.3 | SME Review Storyboard | 1d | 2014-07-24 15:00 | 2014-07-25 14:30 | 0d | as late as possible |
| 65 | 3.2.2.4 | Peer Review Storyboard | 1d | 2014-07-24 15:00 | 2014-07-25 14:30 | 0d | as late as possible |
| 66 | 3.2.2.5 | Storyboard review meeting | 0.5d | 2014-07-25 09:45 | 2014-07-25 14:30 | 0d | as late as possible |
| 67 | 3.2.2.6 | Implement storyboard edits | 1d | 2014-07-24 15:00 | 2014-07-25 14:30 | 0d | as late as possible |
| 68 | 3.2.2.7 | Mgmt review of Storyboard | 0.5d | 2014-07-25 09:45 | 2014-07-25 14:30 | 0d | as late as possible |
| 69 | 3.2.2.8 | Mgmt approval of Storyboard | 0.5d | 2014-07-25 09:45 | 2014-07-25 14:30 | 0d | as late as possible |
| 70 | 3.2.2.9 | Send to editing services | 0.5d | 2014-07-25 09:45 | 2014-07-25 14:30 | 0d | as late as possible |
| 71 | 3.2.2.10 | Send to translation | 0.5d | 2014-07-25 09:45 | 2014-07-25 14:30 | 0d | as late as possible |
| 72 | 3.2.2.11 | Send to Design & Development for prototype creation | 0.5d | 2014-07-25 09:45 | 2014-07-25 14:30 | 0d | as late as possible |
| 73 | 3.2.3 | **Module 3 (Safeguarding Information and Assets)** | 2d | 2014-07-23 15:30 | 2014-07-25 14:30 | 0d |  |
| 74 | 3.2.3.1 | Create Storyboards ensuring proper flow and chunking of content | 2d | 2014-07-23 15:30 | 2014-07-25 14:30 | 0d | as late as possible |
| 75 | 3.2.3.2 | Identify graphic placeholders | 0.5d | 2014-07-25 09:45 | 2014-07-25 14:30 | 0d | as late as possible |
| 76 | 3.2.3.3 | SME Review Storyboard | 1d | 2014-07-24 15:00 | 2014-07-25 14:30 | 0d | as late as possible |
| 77 | 3.2.3.4 | Peer Review Storyboard | 1d | 2014-07-24 15:00 | 2014-07-25 14:30 | 0d | as late as possible |
| 78 | 3.2.3.5 | Storyboard review meeting | 0.5d | 2014-07-25 09:45 | 2014-07-25 14:30 | 0d | as late as possible |
| 79 | 3.2.3.6 | Implement storyboard edits | 1d | 2014-07-24 15:00 | 2014-07-25 14:30 | 0d | as late as possible |
| 80 | 3.2.3.7 | Mgmt review of Storyboard | 0.5d | 2014-07-25 09:45 | 2014-07-25 14:30 | 0d | as late as possible |
| 81 | 3.2.3.8 | Mgmt approval of Storyboard | 0.5d | 2014-07-25 09:45 | 2014-07-25 14:30 | 0d | as late as possible |
| 82 | 3.2.3.9 | Send to editing services | 0.5d | 2014-07-25 09:45 | 2014-07-25 14:30 | 0d | as late as possible |
| 83 | 3.2.3.10 | Send to translation | 0.5d | 2014-07-25 09:45 | 2014-07-25 14:30 | 0d | as late as possible |
| 84 | 3.2.3.11 | Send to Design & Development for prototype creation | 0.5d | 2014-07-25 09:45 | 2014-07-25 14:30 | 0d | as late as possible |

| ID | WBS | Task | Duration | Start | Finish | Total slack | Constraint |
| --- | --- | --- | --- | --- | --- | --- | --- |
| 85 | 3.2.4 | **Module 4 (Applying Security Controls to Business Processes)** | 2d | 2014-07-23 15:30 | 2014-07-25 14:30 | 0d |  |
| 86 | 3.2.4.1 | Create Storyboards ensuring proper flow and chunking of content | 2d | 2014-07-23 15:30 | 2014-07-25 14:30 | 0d | as late as possible |
| 87 | 3.2.4.2 | Identify graphic placeholders | 0.5d | 2014-07-25 09:45 | 2014-07-25 14:30 | 0d | as late as possible |
| 88 | 3.2.4.3 | SME Review Storyboard | 1d | 2014-07-24 15:00 | 2014-07-25 14:30 | 0d | as late as possible |
| 89 | 3.2.4.4 | Peer Review Storyboard | 1d | 2014-07-24 15:00 | 2014-07-25 14:30 | 0d | as late as possible |
| 90 | 3.2.4.5 | Storyboard review meeting | 0.5d | 2014-07-25 09:45 | 2014-07-25 14:30 | 0d | as late as possible |
| 91 | 3.2.4.6 | Implement storyboard edits | 1d | 2014-07-24 15:00 | 2014-07-25 14:30 | 0d | as late as possible |
| 92 | 3.2.4.7 | Mgmt review of Storyboard | 0.5d | 2014-07-25 09:45 | 2014-07-25 14:30 | 0d | as late as possible |
| 93 | 3.2.4.8 | Mgmt approval of Storyboard | 0.5d | 2014-07-25 09:45 | 2014-07-25 14:30 | 0d | as late as possible |
| 94 | 3.2.4.9 | Send to editing services | 0.5d | 2014-07-25 09:45 | 2014-07-25 14:30 | 0d | as late as possible |
| 95 | 3.2.4.10 | Send to translation | 0.5d | 2014-07-25 09:45 | 2014-07-25 14:30 | 0d | as late as possible |
| 96 | 3.2.4.11 | Send to Design & Development for prototype creation | 0.5d | 2014-07-25 09:45 | 2014-07-25 14:30 | 0d | as late as possible |
| 97 | 3.2.5 | **Module 5 (Security Incidents)** | 2d | 2014-07-23 15:30 | 2014-07-25 14:30 | 0d |  |
| 98 | 3.2.5.1 | Create Storyboards ensuring proper flow and chunking of content | 2d | 2014-07-23 15:30 | 2014-07-25 14:30 | 0d | as late as possible |
| 99 | 3.2.5.2 | Identify graphic placeholders | 0.5d | 2014-07-25 09:45 | 2014-07-25 14:30 | 0d | as late as possible |
| 100 | 3.2.5.3 | SME Review Storyboard | 1d | 2014-07-24 15:00 | 2014-07-25 14:30 | 0d | as late as possible |
| 101 | 3.2.5.4 | Peer Review Storyboard | 1d | 2014-07-24 15:00 | 2014-07-25 14:30 | 0d | as late as possible |
| 102 | 3.2.5.5 | Storyboard review meeting | 0.5d | 2014-07-25 09:45 | 2014-07-25 14:30 | 0d | as late as possible |
| 103 | 3.2.5.6 | Implement storyboard edits | 1d | 2014-07-24 15:00 | 2014-07-25 14:30 | 0d | as late as possible |
| 104 | 3.2.5.7 | Mgmt review of Storyboard | 0.5d | 2014-07-25 09:45 | 2014-07-25 14:30 | 0d | as late as possible |
| 105 | 3.2.5.8 | Mgmt approval of Storyboard | 0.5d | 2014-07-25 09:45 | 2014-07-25 14:30 | 0d | as late as possible |
| 106 | 3.2.5.9 | Send to editing services | 0.5d | 2014-07-25 09:45 | 2014-07-25 14:30 | 0d | as late as possible |
| 107 | 3.2.5.10 | Send to translation | 0.5d | 2014-07-25 09:45 | 2014-07-25 14:30 | 0d | as late as possible |
| 108 | 3.2.5.11 | Send to Design & Development for prototype creation | 0.5d | 2014-07-25 09:45 | 2014-07-25 14:30 | 0d | as late as possible |

| ID | WBS | Task | Duration | Start | Finish | Total slack | Constraint |
| --- | --- | --- | --- | --- | --- | --- | --- |
| 109 | 3.2.6 | **Module 6 (National and Departmental Security)** | 2d | 2014-07-23 15:30 | 2014-07-25 14:30 | 0d |  |
| 110 | 3.2.6.1 | Create Storyboards ensuring proper flow and chunking of content | 2d | 2014-07-23 15:30 | 2014-07-25 14:30 | 0d | as late as possible |
| 111 | 3.2.6.2 | Identify graphic placeholders | 0.5d | 2014-07-25 09:45 | 2014-07-25 14:30 | 0d | as late as possible |
| 112 | 3.2.6.3 | SME Review Storyboard | 1d | 2014-07-24 15:00 | 2014-07-25 14:30 | 0d | as late as possible |
| 113 | 3.2.6.4 | Peer Review Storyboard | 1d | 2014-07-24 15:00 | 2014-07-25 14:30 | 0d | as late as possible |
| 114 | 3.2.6.5 | Storyboard review meeting | 0.5d | 2014-07-25 09:45 | 2014-07-25 14:30 | 0d | as late as possible |
| 115 | 3.2.6.6 | Implement storyboard edits | 1d | 2014-07-24 15:00 | 2014-07-25 14:30 | 0d | as late as possible |
| 116 | 3.2.6.7 | Mgmt review of Storyboard | 0.5d | 2014-07-25 09:45 | 2014-07-25 14:30 | 0d | as late as possible |
| 117 | 3.2.6.8 | Mgmt approval of Storyboard | 0.5d | 2014-07-25 09:45 | 2014-07-25 14:30 | 0d | as late as possible |
| 118 | 3.2.6.9 | Send to editing services | 0.5d | 2014-07-25 09:45 | 2014-07-25 14:30 | 0d | as late as possible |
| 119 | 3.2.6.10 | Send to translation | 0.5d | 2014-07-25 09:45 | 2014-07-25 14:30 | 0d | as late as possible |
| 120 | 3.2.6.11 | Send to Design & Development for prototype creation | 0.5d | 2014-07-25 09:45 | 2014-07-25 14:30 | 0d | as late as possible |
| 121 | 3.2.7 | **Module 7 (New and Emerging Threats)** | 2d | 2014-07-23 15:30 | 2014-07-25 14:30 | 0d |  |
| 122 | 3.2.7.1 | Create Storyboards ensuring proper flow and chunking of content | 2d | 2014-07-23 15:30 | 2014-07-25 14:30 | 0d | as late as possible |
| 123 | 3.2.7.2 | Identify graphic placeholders | 0.5d | 2014-07-25 09:45 | 2014-07-25 14:30 | 0d | as late as possible |
| 124 | 3.2.7.3 | SME Review Storyboard | 1d | 2014-07-24 15:00 | 2014-07-25 14:30 | 0d | as late as possible |
| 125 | 3.2.7.4 | Peer Review Storyboard | 1d | 2014-07-24 15:00 | 2014-07-25 14:30 | 0d | as late as possible |
| 126 | 3.2.7.5 | Storyboard review meeting | 0.5d | 2014-07-25 09:45 | 2014-07-25 14:30 | 0d | as late as possible |
| 127 | 3.2.7.6 | Implement storyboard edits | 1d | 2014-07-24 15:00 | 2014-07-25 14:30 | 0d | as late as possible |
| 128 | 3.2.7.7 | Mgmt review of Storyboard | 0.5d | 2014-07-25 09:45 | 2014-07-25 14:30 | 0d | as late as possible |
| 129 | 3.2.7.8 | Mgmt approval of Storyboard | 0.5d | 2014-07-25 09:45 | 2014-07-25 14:30 | 0d | as late as possible |
| 130 | 3.2.7.9 | Send to editing services | 0.5d | 2014-07-25 09:45 | 2014-07-25 14:30 | 0d | as late as possible |
| 131 | 3.2.7.10 | Send to translation | 0.5d | 2014-07-25 09:45 | 2014-07-25 14:30 | 0d | as late as possible |
| 132 | 3.2.7.11 | Send to Design & Development for prototype creation | 0.5d | 2014-07-25 09:45 | 2014-07-25 14:30 | 0d | as late as possible |

| ID | WBS | Task | Duration | Start | Finish | Total slack | Constraint |
| --- | --- | --- | --- | --- | --- | --- | --- |
| 133 | 3.2.8 | **Module 8 (Conclusion and Assessment)** | 2d | 2014-07-23 15:30 | 2014-07-25 14:30 | 0d |  |
| 134 | 3.2.8.1 | Create bank of assessment questions | 2d | 2014-07-23 15:30 | 2014-07-25 14:30 | 0d | as late as possible |
| 135 | 3.2.8.2 | Identify graphic placeholders | 0.5d | 2014-07-25 09:45 | 2014-07-25 14:30 | 0d | as late as possible |
| 136 | 3.2.8.3 | SME Review Storyboard | 1d | 2014-07-24 15:00 | 2014-07-25 14:30 | 0d | as late as possible |
| 137 | 3.2.8.4 | Peer Review Storyboard | 1d | 2014-07-24 15:00 | 2014-07-25 14:30 | 0d | as late as possible |
| 138 | 3.2.8.5 | Storyboard review meeting | 0.5d | 2014-07-25 09:45 | 2014-07-25 14:30 | 0d | as late as possible |
| 139 | 3.2.8.6 | Implement storyboard edits | 1d | 2014-07-24 15:00 | 2014-07-25 14:30 | 0d | as late as possible |
| 140 | 3.2.8.7 | Mgmt review of Storyboard | 0.5d | 2014-07-25 09:45 | 2014-07-25 14:30 | 0d | as late as possible |
| 141 | 3.2.8.8 | Mgmt approval of Storyboard | 0.5d | 2014-07-25 09:45 | 2014-07-25 14:30 | 0d | as late as possible |
| 142 | 3.2.8.9 | Send to editing services | 0.5d | 2014-07-25 09:45 | 2014-07-25 14:30 | 0d | as late as possible |
| 143 | 3.2.8.10 | Send to translation | 0.5d | 2014-07-25 09:45 | 2014-07-25 14:30 | 0d | as late as possible |
| 144 | 3.2.8.11 | Send to Design & Development for prototype creation | 0.5d | 2014-07-25 09:45 | 2014-07-25 14:30 | 0d | as late as possible |
| 145 | 3.2.9 | **Supplementary information** | 2d | 2014-07-23 15:30 | 2014-07-25 14:30 | 0d |  |
| 146 | 3.2.9.1 | Create draft List of Acronyms | 1d | 2014-07-24 15:00 | 2014-07-25 14:30 | 0d | as late as possible |
| 147 | 3.2.9.2 | Create draft Glossary | 2d | 2014-07-23 15:30 | 2014-07-25 14:30 | 0d | as late as possible |
| 148 | 3.2.9.3 | Write Bibliography | 1d | 2014-07-24 15:00 | 2014-07-25 14:30 | 0d | as late as possible |
| 149 | 3.2.9.4 | Send to editing services | 0.5d | 2014-07-25 09:45 | 2014-07-25 14:30 | 0d | as late as possible |
| 150 | 3.2.9.5 | Send to translation | 0.5d | 2014-07-25 09:45 | 2014-07-25 14:30 | 0d | as late as possible |
| 151 | 4 | **Develop - English** | 3d | 2014-07-22 16:00 | 2014-07-25 14:30 | 0d |  |
| 152 | 4.1 | **Visual Storyboarding in HTML5 - English Content** | 3d | 2014-07-22 16:00 | 2014-07-25 14:30 | 0d |  |
| 153 | 4.1.1 | **Module 1 (Intro) - Build HTML5 with content** | 3d | 2014-07-22 16:00 | 2014-07-25 14:30 | 0d |  |
| 154 | 4.1.1.1 | Write, import and organise content into HTML5 | 3d | 2014-07-22 16:00 | 2014-07-25 14:30 | 0d | as late as possible |
| 155 | 4.1.1.2 | Develop interactions | 2d | 2014-07-23 15:30 | 2014-07-25 14:30 | 0d | as late as possible |
| 156 | 4.1.1.3 | Adjust timelines and Animation | 1d | 2014-07-24 15:00 | 2014-07-25 14:30 | 0d | as late as possible |
| 157 | 4.1.1.4 | Download approved graphics | 1d | 2014-07-24 15:00 | 2014-07-25 14:30 | 0d | as late as possible |
| 158 | 4.1.1.5 | Edit, import, and alt tag approved graphics | 2d | 2014-07-23 15:30 | 2014-07-25 14:30 | 0d | as late as possible |
| 159 | 4.1.1.6 | Prototype 1st review by Instructional Designer (ID) on Dev | 0.5d | 2014-07-25 09:45 | 2014-07-25 14:30 | 0d | as late as possible |
| 160 | 4.1.1.7 | Incorporate corrections/feedback | 1d | 2014-07-24 15:00 | 2014-07-25 14:30 | 0d | as late as possible |
| 161 | 4.1.1.8 | Prototype 2nd review by Peer | 0.5d | 2014-07-25 09:45 | 2014-07-25 14:30 | 0d | as late as possible |
| 162 | 4.1.1.9 | Incorporate corrections/feedback | 1d | 2014-07-24 15:00 | 2014-07-25 14:30 | 0d | as late as possible |
| 163 | 4.1.1.10 | Module sign-off by project authority (PA) | 0.5d | 2014-07-25 09:45 | 2014-07-25 14:30 | 0d | as late as possible |

| ID | WBS | Task | Duration | Start | Finish | Total slack | Constraint |
| --- | --- | --- | --- | --- | --- | --- | --- |
| 164 | 4.1.2 | **Module 2 (Policy and Legislative Background) - Build HTML5** | 3d | 2014-07-22 16:00 | 2014-07-25 14:30 | 0d |  |
| 165 | 4.1.2.1 | Write, import and organise content into HTML5 | 3d | 2014-07-22 16:00 | 2014-07-25 14:30 | 0d | as late as possible |
| 166 | 4.1.2.2 | Develop interactions | 2d | 2014-07-23 15:30 | 2014-07-25 14:30 | 0d | as late as possible |
| 167 | 4.1.2.3 | Adjust timelines and Animation | 1d | 2014-07-24 15:00 | 2014-07-25 14:30 | 0d | as late as possible |
| 168 | 4.1.2.4 | Download approved graphics | 1d | 2014-07-24 15:00 | 2014-07-25 14:30 | 0d | as late as possible |
| 169 | 4.1.2.5 | Edit, import, and alt tag approved graphics | 2d | 2014-07-23 15:30 | 2014-07-25 14:30 | 0d | as late as possible |
| 170 | 4.1.2.6 | Prototype 1st review by ID on Dev | 0.5d | 2014-07-25 09:45 | 2014-07-25 14:30 | 0d | as late as possible |
| 171 | 4.1.2.7 | Incorporate corrections/feedback | 1d | 2014-07-24 15:00 | 2014-07-25 14:30 | 0d | as late as possible |
| 172 | 4.1.2.8 | Prototype 2nd review by Peer | 0.5d | 2014-07-25 09:45 | 2014-07-25 14:30 | 0d | as late as possible |
| 173 | 4.1.2.9 | Incorporate corrections/feedback | 1d | 2014-07-24 15:00 | 2014-07-25 14:30 | 0d | as late as possible |
| 174 | 4.1.2.10 | Module sign-off by project authority | 0.5d | 2014-07-25 09:45 | 2014-07-25 14:30 | 0d | as late as possible |
| 175 | 4.1.3 | **Module 3 (Safeguarding Information and Assets)** | 3d | 2014-07-22 16:00 | 2014-07-25 14:30 | 0d |  |
| 176 | 4.1.3.1 | Write, import and organise content into HTML5 | 3d | 2014-07-22 16:00 | 2014-07-25 14:30 | 0d | as late as possible |
| 177 | 4.1.3.2 | Develop interactions | 2d | 2014-07-23 15:30 | 2014-07-25 14:30 | 0d | as late as possible |
| 178 | 4.1.3.3 | Adjust timelines and Animation | 1d | 2014-07-24 15:00 | 2014-07-25 14:30 | 0d | as late as possible |
| 179 | 4.1.3.4 | Download approved graphics | 1d | 2014-07-24 15:00 | 2014-07-25 14:30 | 0d | as late as possible |
| 180 | 4.1.3.5 | Edit, import, and alt tag approved graphics | 2d | 2014-07-23 15:30 | 2014-07-25 14:30 | 0d | as late as possible |
| 181 | 4.1.3.6 | Prototype 1st review by ID on Dev | 0.5d | 2014-07-25 09:45 | 2014-07-25 14:30 | 0d | as late as possible |
| 182 | 4.1.3.7 | Incorporate corrections/feedback | 1d | 2014-07-24 15:00 | 2014-07-25 14:30 | 0d | as late as possible |
| 183 | 4.1.3.8 | Prototype 2nd review by Peer | 0.5d | 2014-07-25 09:45 | 2014-07-25 14:30 | 0d | as late as possible |
| 184 | 4.1.3.9 | Incorporate corrections/feedback | 1d | 2014-07-24 15:00 | 2014-07-25 14:30 | 0d | as late as possible |
| 185 | 4.1.3.10 | Module sign-off by project authority | 0.5d | 2014-07-25 09:45 | 2014-07-25 14:30 | 0d | as late as possible |
| 186 | 4.1.4 | **Module 4 (Applying Security Controls to Business Processes)** | 3d | 2014-07-22 16:00 | 2014-07-25 14:30 | 0d |  |
| 187 | 4.1.4.1 | Write, import and organise content into HTML5 | 3d | 2014-07-22 16:00 | 2014-07-25 14:30 | 0d | as late as possible |
| 188 | 4.1.4.2 | Develop interactions | 2d | 2014-07-23 15:30 | 2014-07-25 14:30 | 0d | as late as possible |
| 189 | 4.1.4.3 | Adjust timelines and Animation | 1d | 2014-07-24 15:00 | 2014-07-25 14:30 | 0d | as late as possible |
| 190 | 4.1.4.4 | Download approved graphics | 1d | 2014-07-24 15:00 | 2014-07-25 14:30 | 0d | as late as possible |
| 191 | 4.1.4.5 | Edit, import, and alt tag approved graphics | 2d | 2014-07-23 15:30 | 2014-07-25 14:30 | 0d | as late as possible |
| 192 | 4.1.4.6 | Prototype 1st review by ID on Dev | 0.5d | 2014-07-25 09:45 | 2014-07-25 14:30 | 0d | as late as possible |
| 193 | 4.1.4.7 | Incorporate corrections/feedback | 1d | 2014-07-24 15:00 | 2014-07-25 14:30 | 0d | as late as possible |
| 194 | 4.1.4.8 | Prototype 2nd review by Peer | 0.5d | 2014-07-25 09:45 | 2014-07-25 14:30 | 0d | as late as possible |
| 195 | 4.1.4.9 | Incorporate corrections/feedback | 1d | 2014-07-24 15:00 | 2014-07-25 14:30 | 0d | as late as possible |
| 196 | 4.1.4.10 | Module sign-off by project authority | 0.5d | 2014-07-25 09:45 | 2014-07-25 14:30 | 0d | as late as possible |

| ID | WBS | Task | Duration | Start | Finish | Total slack | Constraint |
| --- | --- | --- | --- | --- | --- | --- | --- |
| 197 | 4.1.5 | **Module 5 (Security Incidents)** | 3d | 2014-07-22 16:00 | 2014-07-25 14:30 | 0d |  |
| 198 | 4.1.5.1 | Write, import and organise content into HTML5 | 3d | 2014-07-22 16:00 | 2014-07-25 14:30 | 0d | as late as possible |
| 199 | 4.1.5.2 | Develop interactions | 2d | 2014-07-23 15:30 | 2014-07-25 14:30 | 0d | as late as possible |
| 200 | 4.1.5.3 | Adjust timelines and Animation | 1d | 2014-07-24 15:00 | 2014-07-25 14:30 | 0d | as late as possible |
| 201 | 4.1.5.4 | Download approved graphics | 1d | 2014-07-24 15:00 | 2014-07-25 14:30 | 0d | as late as possible |
| 202 | 4.1.5.5 | Edit, import, and alt tag approved graphics | 2d | 2014-07-23 15:30 | 2014-07-25 14:30 | 0d | as late as possible |
| 203 | 4.1.5.6 | Prototype 1st review by ID on Dev | 0.5d | 2014-07-25 09:45 | 2014-07-25 14:30 | 0d | as late as possible |
| 204 | 4.1.5.7 | Incorporate corrections/feedback | 1d | 2014-07-24 15:00 | 2014-07-25 14:30 | 0d | as late as possible |
| 205 | 4.1.5.8 | Prototype 2nd review by Peer | 0.5d | 2014-07-25 09:45 | 2014-07-25 14:30 | 0d | as late as possible |
| 206 | 4.1.5.9 | Incorporate corrections/feedback | 1d | 2014-07-24 15:00 | 2014-07-25 14:30 | 0d | as late as possible |
| 207 | 4.1.5.10 | Module sign-off by project authority | 0.5d | 2014-07-25 09:45 | 2014-07-25 14:30 | 0d | as late as possible |
| 208 | 4.1.6 | **Module 6 (National and Departmental Security)** | 3d | 2014-07-22 16:00 | 2014-07-25 14:30 | 0d |  |
| 209 | 4.1.6.1 | Write, import and organise content into HTML5 | 3d | 2014-07-22 16:00 | 2014-07-25 14:30 | 0d | as late as possible |
| 210 | 4.1.6.2 | Develop interactions | 2d | 2014-07-23 15:30 | 2014-07-25 14:30 | 0d | as late as possible |
| 211 | 4.1.6.3 | Adjust timelines and Animation | 1d | 2014-07-24 15:00 | 2014-07-25 14:30 | 0d | as late as possible |
| 212 | 4.1.6.4 | Download approved graphics | 1d | 2014-07-24 15:00 | 2014-07-25 14:30 | 0d | as late as possible |
| 213 | 4.1.6.5 | Edit, import, and alt tag approved graphics | 2d | 2014-07-23 15:30 | 2014-07-25 14:30 | 0d | as late as possible |
| 214 | 4.1.6.6 | Prototype 1st review by ID on Dev | 0.5d | 2014-07-25 09:45 | 2014-07-25 14:30 | 0d | as late as possible |
| 215 | 4.1.6.7 | Incorporate corrections/feedback | 1d | 2014-07-24 15:00 | 2014-07-25 14:30 | 0d | as late as possible |
| 216 | 4.1.6.8 | Prototype 2nd review by Peer | 0.5d | 2014-07-25 09:45 | 2014-07-25 14:30 | 0d | as late as possible |
| 217 | 4.1.6.9 | Incorporate corrections/feedback | 1d | 2014-07-24 15:00 | 2014-07-25 14:30 | 0d | as late as possible |
| 218 | 4.1.6.10 | Module sign-off by project authority | 0.5d | 2014-07-25 09:45 | 2014-07-25 14:30 | 0d | as late as possible |
| 219 | 4.1.7 | **Module 7 (New and Emerging Threats)** | 3d | 2014-07-22 16:00 | 2014-07-25 14:30 | 0d |  |
| 220 | 4.1.7.1 | Write, import and organise content into HTML5 | 3d | 2014-07-22 16:00 | 2014-07-25 14:30 | 0d | as late as possible |
| 221 | 4.1.7.2 | Develop interactions | 2d | 2014-07-23 15:30 | 2014-07-25 14:30 | 0d | as late as possible |
| 222 | 4.1.7.3 | Adjust timelines and Animation | 1d | 2014-07-24 15:00 | 2014-07-25 14:30 | 0d | as late as possible |
| 223 | 4.1.7.4 | Download approved graphics | 1d | 2014-07-24 15:00 | 2014-07-25 14:30 | 0d | as late as possible |
| 224 | 4.1.7.5 | Edit, import, and alt tag approved graphics | 2d | 2014-07-23 15:30 | 2014-07-25 14:30 | 0d | as late as possible |
| 225 | 4.1.7.6 | Prototype 1st review by ID on Dev | 0.5d | 2014-07-25 09:45 | 2014-07-25 14:30 | 0d | as late as possible |
| 226 | 4.1.7.7 | Incorporate corrections/feedback | 1d | 2014-07-24 15:00 | 2014-07-25 14:30 | 0d | as late as possible |
| 227 | 4.1.7.8 | Prototype 2nd review by Peer | 0.5d | 2014-07-25 09:45 | 2014-07-25 14:30 | 0d | as late as possible |
| 228 | 4.1.7.9 | Incorporate corrections/feedback | 1d | 2014-07-24 15:00 | 2014-07-25 14:30 | 0d | as late as possible |
| 229 | 4.1.7.10 | Module sign-off by project authority | 0.5d | 2014-07-25 09:45 | 2014-07-25 14:30 | 0d | as late as possible |

| ID | WBS | Task | Duration | Start | Finish | Total slack | Constraint |
| --- | --- | --- | --- | --- | --- | --- | --- |
| 230 | 4.1.8 | **Module 8 (Conclusion and Assessment)** | 3d | 2014-07-22 16:00 | 2014-07-25 14:30 | 0d |  |
| 231 | 4.1.8.1 | Author and organise content into HTML5 | 3d | 2014-07-22 16:00 | 2014-07-25 14:30 | 0d | as late as possible |
| 232 | 4.1.8.2 | Develop interactions | 2d | 2014-07-23 15:30 | 2014-07-25 14:30 | 0d | as late as possible |
| 233 | 4.1.8.3 | Adjust timelines and Animation | 1d | 2014-07-24 15:00 | 2014-07-25 14:30 | 0d | as late as possible |
| 234 | 4.1.8.4 | Download approved graphics | 1d | 2014-07-24 15:00 | 2014-07-25 14:30 | 0d | as late as possible |
| 235 | 4.1.8.5 | Edit, import, and alt tag approved graphics | 2d | 2014-07-23 15:30 | 2014-07-25 14:30 | 0d | as late as possible |
| 236 | 4.1.8.6 | Prototype 1st review by ID on Dev | 0.5d | 2014-07-25 09:45 | 2014-07-25 14:30 | 0d | as late as possible |
| 237 | 4.1.8.7 | Incorporate corrections/feedback | 1d | 2014-07-24 15:00 | 2014-07-25 14:30 | 0d | as late as possible |
| 238 | 4.1.8.8 | Prototype 2nd review by Peer | 0.5d | 2014-07-25 09:45 | 2014-07-25 14:30 | 0d | as late as possible |
| 239 | 4.1.8.9 | Incorporate corrections/feedback | 1d | 2014-07-24 15:00 | 2014-07-25 14:30 | 0d | as late as possible |
| 240 | 4.1.8.10 | Module sign-off by project authority | 0.5d | 2014-07-25 09:45 | 2014-07-25 14:30 | 0d | as late as possible |
| 241 | 4.2 | **Assemble all assets together — English Version** | 3d | 2014-07-22 16:00 | 2014-07-25 14:30 | 0d |  |
| 242 | 4.2.1 | Publish alpha version of lesson in an HTML format for review in Dev_iLMS | 1d | 2014-07-24 15:00 | 2014-07-25 14:30 | 0d | as late as possible |
| 243 | 4.2.2 | FQA - Alpha test to identify problems | 3d | 2014-07-22 16:00 | 2014-07-25 14:30 | 0d | as late as possible |
| 244 | 4.2.3 | Modify lesson as identified in alpha test | 2d | 2014-07-23 15:30 | 2014-07-25 14:30 | 0d | as late as possible |
| 245 | 4.2.4 | Publish beta version of lesson | 1d | 2014-07-24 15:00 | 2014-07-25 14:30 | 0d | as late as possible |
| 246 | 4.2.5 | ID QA - Beta test | 2d | 2014-07-23 15:30 | 2014-07-25 14:30 | 0d | as late as possible |
| 247 | 4.2.6 | Modify lesson as identified in beta test | 1d | 2014-07-24 15:00 | 2014-07-25 14:30 | 0d | as late as possible |
| 248 | 4.2.7 | Resend to editing services if major changes requested | 0.5d | 2014-07-25 09:45 | 2014-07-25 14:30 | 0d | as late as possible |
| 249 | 4.2.8 | Resend to translation if major changes requested | 0.5d | 2014-07-25 09:45 | 2014-07-25 14:30 | 0d | as late as possible |
| 250 | 5 | **FQA and Integration testing** | 2d | 2014-07-23 15:30 | 2014-07-25 14:30 | 0d |  |
| 251 | 5.1 | Publish files adapted to dev_iLMS (SCORM 1.2) | 1d | 2014-07-24 15:00 | 2014-07-25 14:30 | 0d | as late as possible |
| 252 | 5.2 | Technical QA Alpha English | 2d | 2014-07-23 15:30 | 2014-07-25 14:30 | 0d | as late as possible |
| 253 | 5.3 | Make corrections requested and needed from FQA alpha English | 1d | 2014-07-24 15:00 | 2014-07-25 14:30 | 0d | as late as possible |
| 254 | 5.4 | Final QA check-up (English) | 1d | 2014-07-24 15:00 | 2014-07-25 14:30 | 0d | as late as possible |
| 255 | 5.5 | FQA and Intregration Testing IT | 1d | 2014-07-24 15:00 | 2014-07-25 14:30 | 0d | as late as possible |
| 256 | 5.6 | Approval of English Content | 0.5d | 2014-07-25 09:45 | 2014-07-25 14:30 | 0d | as late as possible |

| ID | WBS | Task | Duration | Start | Finish | Total slack | Constraint |
| --- | --- | --- | --- | --- | --- | --- | --- |
| 257 | 6 | **Evaluate** | 5d | 2014-07-21 08:00 | 2014-07-25 14:30 | 0d |  |
| 258 | 6.1 | **English - Pilot** | 1d | 2014-07-24 15:00 | 2014-07-25 14:30 | 0d |  |
| 259 | 6.1.1 | Request list for pilot participants | 0.5d | 2014-07-25 09:45 | 2014-07-25 14:30 | 0d | as late as possible |
| 260 | 6.1.2 | Send pilot participant invitation | 0.5d | 2014-07-25 09:45 | 2014-07-25 14:30 | 0d | as late as possible |
| 261 | 6.1.3 | Upload prototype course and test | 1d | 2014-07-24 15:00 | 2014-07-25 14:30 | 0d | as late as possible |
| 262 | 6.1.4 | Conduct pilot | 1d | 2014-07-24 15:00 | 2014-07-25 14:30 | 0d | as late as possible |
| 263 | 6.2 | **Feedback** | 5d | 2014-07-21 08:00 | 2014-07-25 14:30 | 0d |  |
| 264 | 6.2.1 | Review pilot feedback | 2d | 2014-07-23 15:30 | 2014-07-25 14:30 | 0d | as late as possible |
| 265 | 6.2.2 | Make corrections to Storyboards | 3d | 2014-07-22 16:00 | 2014-07-25 14:30 | 0d | as late as possible |
| 266 | 6.2.3 | Send to editing services and translation if major changes requested | 0.5d | 2014-07-25 09:45 | 2014-07-25 14:30 | 0d | as late as possible |
| 267 | 6.2.4 | Resubmit SB to Development team for authoring | 0.5d | 2014-07-25 09:45 | 2014-07-25 14:30 | 0d | as late as possible |
| 268 | 6.2.5 | Implement feedback - Publish to Dev_iLMS | 5d | 2014-07-21 08:00 | 2014-07-25 14:30 | 0d | as late as possible |
| 269 | 7 | **Testing and Accessibility** | 2d | 2014-07-23 15:30 | 2014-07-25 14:30 | 0d |  |
| 270 | 7.1 | Final English FQA and Integration testing | 1d | 2014-07-24 15:00 | 2014-07-25 14:30 | 0d | as late as possible |
| 271 | 7.2 | Test accessibility of english course | 2d | 2014-07-23 15:30 | 2014-07-25 14:30 | 0d | as late as possible |
| 272 | 7.3 | Make modifications as necessary | 2d | 2014-07-23 15:30 | 2014-07-25 14:30 | 0d | as late as possible |
| 273 | 7.4 | Approval of accessible version | 0.5d | 2014-07-25 09:45 | 2014-07-25 14:30 | 0d | as late as possible |
| 274 | 8 | **French - Storyboards** | 5d | 2014-07-21 08:00 | 2014-07-25 14:30 | 0d |  |
| 275 | 8.1 | Create French Storyboards | 5d | 2014-07-21 08:00 | 2014-07-25 14:30 | 0d | as late as possible |
| 276 | 8.2 | Send French SB to editing services | 0.5d | 2014-07-25 09:45 | 2014-07-25 14:30 | 0d | as late as possible |
| 277 | 8.3 | QA French Storyboards | 3d | 2014-07-22 16:00 | 2014-07-25 14:30 | 0d | as late as possible |
| 278 | 8.4 | Send Storyboards to Design and Development for authoring | 0.5d | 2014-07-25 09:45 | 2014-07-25 14:30 | 0d | as late as possible |
| 279 | 9 | **Develop - French** | 3d | 2014-07-22 16:00 | 2014-07-25 14:30 | 0d |  |
| 280 | 9.1 | **Visual Storyboarding in HTML5 - French Content** | 3d | 2014-07-22 16:00 | 2014-07-25 14:30 | 0d |  |
| 281 | 9.1.1 | **Module 1 (Intro) - Build HTML5 with content** | 3d | 2014-07-22 16:00 | 2014-07-25 14:30 | 0d |  |
| 282 | 9.1.1.1 | Author and organise content into HTML5 | 3d | 2014-07-22 16:00 | 2014-07-25 14:30 | 0d | as late as possible |
| 283 | 9.1.1.2 | Develop interactions | 2d | 2014-07-23 15:30 | 2014-07-25 14:30 | 0d | as late as possible |
| 284 | 9.1.1.3 | Adjust timelines and Animation | 1d | 2014-07-24 15:00 | 2014-07-25 14:30 | 0d | as late as possible |
| 285 | 9.1.1.4 | Edit, import, and alt tag approved graphics | 2d | 2014-07-23 15:30 | 2014-07-25 14:30 | 0d | as late as possible |
| 286 | 9.1.1.5 | Prototype review by ID | 0.5d | 2014-07-25 09:45 | 2014-07-25 14:30 | 0d | as late as possible |
| 287 | 9.1.1.6 | Incorporate corrections/feedback | 1d | 2014-07-24 15:00 | 2014-07-25 14:30 | 0d | as late as possible |
| 288 | 9.1.1.7 | Module sign-off by PA | 0.5d | 2014-07-25 09:45 | 2014-07-25 14:30 | 0d | as late as possible |

| ID | WBS | Task | Duration | Start | Finish | Total slack | Constraint |
| --- | --- | --- | --- | --- | --- | --- | --- |
| 289 | 9.1.2 | **Module 2 (Policy and Legislative Background) - Build HTML5** | 3d | 2014-07-22 16:00 | 2014-07-25 14:30 | 0d |  |
| 290 | 9.1.2.1 | Author and organise content into HTML5 | 3d | 2014-07-22 16:00 | 2014-07-25 14:30 | 0d | as late as possible |
| 291 | 9.1.2.2 | Develop interactions | 2d | 2014-07-23 15:30 | 2014-07-25 14:30 | 0d | as late as possible |
| 292 | 9.1.2.3 | Adjust timelines and Animation | 1d | 2014-07-24 15:00 | 2014-07-25 14:30 | 0d | as late as possible |
| 293 | 9.1.2.4 | Edit, import, and alt tag approved graphics | 2d | 2014-07-23 15:30 | 2014-07-25 14:30 | 0d | as late as possible |
| 294 | 9.1.2.5 | Prototype 1st review by ID | 0.5d | 2014-07-25 09:45 | 2014-07-25 14:30 | 0d | as late as possible |
| 295 | 9.1.2.6 | Incorporate corrections/feedback | 1d | 2014-07-24 15:00 | 2014-07-25 14:30 | 0d | as late as possible |
| 296 | 9.1.2.7 | Module sign-off by PA | 0.5d | 2014-07-25 09:45 | 2014-07-25 14:30 | 0d | as late as possible |
| 297 | 9.1.3 | **Module 3 (Safeguarding Information and Assets)** | 3d | 2014-07-22 16:00 | 2014-07-25 14:30 | 0d |  |
| 298 | 9.1.3.1 | Author and organise content into HTML5 | 3d | 2014-07-22 16:00 | 2014-07-25 14:30 | 0d | as late as possible |
| 299 | 9.1.3.2 | Develop interactions | 2d | 2014-07-23 15:30 | 2014-07-25 14:30 | 0d | as late as possible |
| 300 | 9.1.3.3 | Adjust timelines and Animation | 1d | 2014-07-24 15:00 | 2014-07-25 14:30 | 0d | as late as possible |
| 301 | 9.1.3.4 | Edit, import, and alt tag approved graphics | 2d | 2014-07-23 15:30 | 2014-07-25 14:30 | 0d | as late as possible |
| 302 | 9.1.3.5 | Prototype 1st review by ID | 0.5d | 2014-07-25 09:45 | 2014-07-25 14:30 | 0d | as late as possible |
| 303 | 9.1.3.6 | Incorporate corrections/feedback | 1d | 2014-07-24 15:00 | 2014-07-25 14:30 | 0d | as late as possible |
| 304 | 9.1.3.7 | Module sign-off by PA | 0.5d | 2014-07-25 09:45 | 2014-07-25 14:30 | 0d | as late as possible |
| 305 | 9.1.4 | **Module 4 (Applying Security Controls to Business Processes)** | 3d | 2014-07-22 16:00 | 2014-07-25 14:30 | 0d |  |
| 306 | 9.1.4.1 | Author and organise content into HTML5 | 3d | 2014-07-22 16:00 | 2014-07-25 14:30 | 0d | as late as possible |
| 307 | 9.1.4.2 | Develop interactions | 2d | 2014-07-23 15:30 | 2014-07-25 14:30 | 0d | as late as possible |
| 308 | 9.1.4.3 | Adjust timelines and Animation | 1d | 2014-07-24 15:00 | 2014-07-25 14:30 | 0d | as late as possible |
| 309 | 9.1.4.4 | Edit, import, and alt tag approved graphics | 2d | 2014-07-23 15:30 | 2014-07-25 14:30 | 0d | as late as possible |
| 310 | 9.1.4.5 | Prototype 1st review by ID | 0.5d | 2014-07-25 09:45 | 2014-07-25 14:30 | 0d | as late as possible |
| 311 | 9.1.4.6 | Incorporate corrections/feedback | 1d | 2014-07-24 15:00 | 2014-07-25 14:30 | 0d | as late as possible |
| 312 | 9.1.4.7 | Module sign-off by PA | 0.5d | 2014-07-25 09:45 | 2014-07-25 14:30 | 0d | as late as possible |

| ID | WBS | Task | Duration | Start | Finish | Total slack | Constraint |
| --- | --- | --- | --- | --- | --- | --- | --- |
| 313 | 9.1.5 | **Module 5 (Security Incidents)** | 3d | 2014-07-22 16:00 | 2014-07-25 14:30 | 0d |  |
| 314 | 9.1.5.1 | Author and organise content into HTML5 | 3d | 2014-07-22 16:00 | 2014-07-25 14:30 | 0d | as late as possible |
| 315 | 9.1.5.2 | Develop interactions | 2d | 2014-07-23 15:30 | 2014-07-25 14:30 | 0d | as late as possible |
| 316 | 9.1.5.3 | Adjust timelines and Animation | 1d | 2014-07-24 15:00 | 2014-07-25 14:30 | 0d | as late as possible |
| 317 | 9.1.5.4 | Edit, import, and alt tag approved graphics | 2d | 2014-07-23 15:30 | 2014-07-25 14:30 | 0d | as late as possible |
| 318 | 9.1.5.5 | Prototype 1st review by ID | 0.5d | 2014-07-25 09:45 | 2014-07-25 14:30 | 0d | as late as possible |
| 319 | 9.1.5.6 | Incorporate corrections/feedback | 1d | 2014-07-24 15:00 | 2014-07-25 14:30 | 0d | as late as possible |
| 320 | 9.1.5.7 | Module sign-off by PA | 0.5d | 2014-07-25 09:45 | 2014-07-25 14:30 | 0d | as late as possible |
| 321 | 9.1.6 | **Module 6 (National and Departmental Security)** | 3d | 2014-07-22 16:00 | 2014-07-25 14:30 | 0d |  |
| 322 | 9.1.6.1 | Author and organise content into HTML5 | 3d | 2014-07-22 16:00 | 2014-07-25 14:30 | 0d | as late as possible |
| 323 | 9.1.6.2 | Develop interactions | 2d | 2014-07-23 15:30 | 2014-07-25 14:30 | 0d | as late as possible |
| 324 | 9.1.6.3 | Adjust timelines and Animation | 1d | 2014-07-24 15:00 | 2014-07-25 14:30 | 0d | as late as possible |
| 325 | 9.1.6.4 | Edit, import, and alt tag approved graphics | 2d | 2014-07-23 15:30 | 2014-07-25 14:30 | 0d | as late as possible |
| 326 | 9.1.6.5 | Prototype 1st review by ID | 0.5d | 2014-07-25 09:45 | 2014-07-25 14:30 | 0d | as late as possible |
| 327 | 9.1.6.6 | Incorporate corrections/feedback | 1d | 2014-07-24 15:00 | 2014-07-25 14:30 | 0d | as late as possible |
| 328 | 9.1.6.7 | Module sign-off by PA | 0.5d | 2014-07-25 09:45 | 2014-07-25 14:30 | 0d | as late as possible |
| 329 | 9.1.7 | **Module 7 (New and Emerging Threats)** | 3d | 2014-07-22 16:00 | 2014-07-25 14:30 | 0d |  |
| 330 | 9.1.7.1 | Author and organise content into HTML5 | 3d | 2014-07-22 16:00 | 2014-07-25 14:30 | 0d | as late as possible |
| 331 | 9.1.7.2 | Develop interactions | 2d | 2014-07-23 15:30 | 2014-07-25 14:30 | 0d | as late as possible |
| 332 | 9.1.7.3 | Adjust timelines and Animation | 1d | 2014-07-24 15:00 | 2014-07-25 14:30 | 0d | as late as possible |
| 333 | 9.1.7.4 | Edit, import, and alt tag approved graphics | 2d | 2014-07-23 15:30 | 2014-07-25 14:30 | 0d | as late as possible |
| 334 | 9.1.7.5 | Prototype 1st review by ID | 0.5d | 2014-07-25 09:45 | 2014-07-25 14:30 | 0d | as late as possible |
| 335 | 9.1.7.6 | Incorporate corrections/feedback | 1d | 2014-07-24 15:00 | 2014-07-25 14:30 | 0d | as late as possible |
| 336 | 9.1.7.7 | Module sign-off by PA | 0.5d | 2014-07-25 09:45 | 2014-07-25 14:30 | 0d | as late as possible |

| ID | WBS | Task | Duration | Start | Finish | Total slack | Constraint |
| --- | --- | --- | --- | --- | --- | --- | --- |
| 337 | 9.1.8 | **Module 8 (Conclusion and Assessment)** | 3d | 2014-07-22 16:00 | 2014-07-25 14:30 | 0d |  |
| 338 | 9.1.8.1 | Author and organise content into HTML5 | 3d | 2014-07-22 16:00 | 2014-07-25 14:30 | 0d | as late as possible |
| 339 | 9.1.8.2 | Develop interactions | 2d | 2014-07-23 15:30 | 2014-07-25 14:30 | 0d | as late as possible |
| 340 | 9.1.8.3 | Adjust timelines and Animation | 1d | 2014-07-24 15:00 | 2014-07-25 14:30 | 0d | as late as possible |
| 341 | 9.1.8.4 | Edit, import, and alt tag approved graphics | 2d | 2014-07-23 15:30 | 2014-07-25 14:30 | 0d | as late as possible |
| 342 | 9.1.8.5 | Prototype 1st review by ID | 0.5d | 2014-07-25 09:45 | 2014-07-25 14:30 | 0d | as late as possible |
| 343 | 9.1.8.6 | Incorporate corrections/feedback | 1d | 2014-07-24 15:00 | 2014-07-25 14:30 | 0d | as late as possible |
| 344 | 9.1.8.7 | Module sign-off by PA | 0.5d | 2014-07-25 09:45 | 2014-07-25 14:30 | 0d | as late as possible |
| 345 | 9.2 | **Assemble all assets together — French Version** | 3d | 2014-07-22 16:00 | 2014-07-25 14:30 | 0d |  |
| 346 | 9.2.1 | Publish alpha version of lesson in an HTML format for review in Dev_iLMS | 1d | 2014-07-24 15:00 | 2014-07-25 14:30 | 0d | as late as possible |
| 347 | 9.2.2 | FQA - Alpha test to identify problems | 3d | 2014-07-22 16:00 | 2014-07-25 14:30 | 0d | as late as possible |
| 348 | 9.2.3 | Modify lesson as identified in alpha test | 2d | 2014-07-23 15:30 | 2014-07-25 14:30 | 0d | as late as possible |
| 349 | 9.2.4 | Publish beta version of lesson | 1d | 2014-07-24 15:00 | 2014-07-25 14:30 | 0d | as late as possible |
| 350 | 9.2.5 | ID QA - Beta test | 2d | 2014-07-23 15:30 | 2014-07-25 14:30 | 0d | as late as possible |
| 351 | 9.2.6 | Modify lesson as identified in beta test | 1d | 2014-07-24 15:00 | 2014-07-25 14:30 | 0d | as late as possible |
| 352 | 9.2.7 | Resend to editing services if major changes requested | 0.5d | 2014-07-25 09:45 | 2014-07-25 14:30 | 0d | as late as possible |
| 353 | 9.2.8 | project authority's Sign-Off on lesson | 0.5d | 2014-07-25 09:45 | 2014-07-25 14:30 | 0d | as late as possible |
| 354 | 10 | **Testing and FQA** | 2d | 2014-07-23 15:30 | 2014-07-25 14:30 | 0d |  |
| 355 | 10.1 | **Dev_iLMS** | 2d | 2014-07-23 15:30 | 2014-07-25 14:30 | 0d |  |
| 356 | 10.1.1 | Publish files adapted to dev_iLMS (SCORM 1.2) | 1d | 2014-07-24 15:00 | 2014-07-25 14:30 | 0d | as late as possible |
| 357 | 10.1.2 | Technical QA Alpha French | 2d | 2014-07-23 15:30 | 2014-07-25 14:30 | 0d | as late as possible |
| 358 | 10.1.3 | Make corrections requested and needed from QA alpha French | 1d | 2014-07-24 15:00 | 2014-07-25 14:30 | 0d | as late as possible |
| 359 | 10.1.4 | Final QA check-up (French) | 1d | 2014-07-24 15:00 | 2014-07-25 14:30 | 0d | as late as possible |
| 360 | 10.1.5 | FQA and Intregration Testing IT | 1d | 2014-07-24 15:00 | 2014-07-25 14:30 | 0d | as late as possible |
| 361 | 10.1.6 | Approval of French Content | 0.5d | 2014-07-25 09:45 | 2014-07-25 14:30 | 0d | as late as possible |
| 362 | 10.1.7 | Request to upload content to prod | 0.5d | 2014-07-25 09:45 | 2014-07-25 14:30 | 0d | as late as possible |
| 363 | 10.1.8 | Create course entry & offering | 1d | 2014-07-24 15:00 | 2014-07-25 14:30 | 0d | as late as possible |
| 364 | 10.1.9 | QA of course entry & offering with final LOIF | 1d | 2014-07-24 15:00 | 2014-07-25 14:30 | 0d | as late as possible |

| ID | WBS | Task | Duration | Start | Finish | Total slack | Constraint |
| --- | --- | --- | --- | --- | --- | --- | --- |
| 365 | 10.2 | **Accessibility** | 1d | 2014-07-24 15:00 | 2014-07-25 14:30 | 0d |  |
| 366 | 10.2.1 | FQA and test accessibility of French version | 1d | 2014-07-24 15:00 | 2014-07-25 14:30 | 0d | as late as possible |
| 367 | 10.2.2 | Make modifications as necessary | 1d | 2014-07-24 15:00 | 2014-07-25 14:30 | 0d | as late as possible |
| 368 | 10.2.3 | Approval of accessible version | 0.5d | 2014-07-25 09:45 | 2014-07-25 14:30 | 0d | as late as possible |
| 369 | 11 | **Implementation** | 0.5d | 2014-07-25 09:45 | 2014-07-25 14:30 | 0d |  |
| 370 | 11.1 | Obtain mgmt approval | 0.5d | 2014-07-25 09:45 | 2014-07-25 14:30 | 0d | as late as possible |
| 371 | 11.2 | Publish final version of files to Live_iLMS (SCORM 1.2) | 0.5d | 2014-07-25 09:45 | 2014-07-25 14:30 | 0d | as late as possible |
| 372 | 12 | **Communication** | 1d | 2014-07-24 15:00 | 2014-07-25 14:30 | 0d |  |
| 373 | 12.1 | **Communicate new online product** | 1d | 2014-07-24 15:00 | 2014-07-25 14:30 | 0d |  |
| 374 | 12.1.1 | Gen-Comm | 0.5d | 2014-07-25 09:45 | 2014-07-25 14:30 | 0d | as late as possible |
| 375 | 12.1.2 | Marketing | 1d | 2014-07-24 15:00 | 2014-07-25 14:30 | 0d | as late as possible |
| 376 | 12.1.3 | Website development | 1d | 2014-07-24 15:00 | 2014-07-25 14:30 | 0d | as late as possible |
| 377 | 12.1.4 | Modify landing page | 1d | 2014-07-24 15:00 | 2014-07-25 14:30 | 0d | as late as possible |
| 378 | 13 | **Close out** | 5d | 2014-07-21 08:00 | 2014-07-25 14:30 | 0d |  |
| 379 | 13.1 | **Project Close out** | 5d | 2014-07-21 08:00 | 2014-07-25 14:30 | 0d |  |
| 380 | 13.1.1 | Document Lessons learned | 5d | 2014-07-21 08:00 | 2014-07-25 14:30 | 0d | as late as possible |
| 381 | 13.1.2 | Evaluate the process | 5d | 2014-07-21 08:00 | 2014-07-25 14:30 | 0d | as late as possible |
| 382 | 13.1.3 | Working group close out meeting | 1d | 2014-07-24 15:00 | 2014-07-25 14:30 | 0d | as late as possible |
